Schedule from MS Project, 2009-12-28 to 2010-01-29, status date 2010-01-23, 10 hours a day, costs in ￥, A marks actual dates.

## Calendars

- 标准: Mon-Sun 08:00-11:30, 14:00-17:30, 18:30-21:30.

## Resources

| Resource | Group |
| --- | --- |
| 管铆（静） | 静设备组 |
| 起重工（静） | 静设备组 |
| 焊工（静） | 静设备组 |
| 25吨吊车（静） | 静设备组 |
| 50吨吊车（静） | 静设备组 |
| 125吨吊车（静） | 静设备组 |
| 50t吊车（静） | 静设备组 |
| 钳工（动） | 动设备检修 |
| 起重工（动） | 动设备检修 |

## Schedule

| ID | WBS | Task | Type | Duration | Start | Finish | Predecessors | Complete | Remaining | Baseline start | Baseline finish | Baseline duration | Total slack | Constraint | Work | Actual work | Cost | Baseline cost | Actual cost |
| --- | --- | --- | --- | --- | --- | --- | --- | --- | --- | --- | --- | --- | --- | --- | --- | --- | --- | --- | --- |
| 1 | 1 | **高压系统大修** |  | 33d | 2009-12-28 A | 2010-01-29 |  | 99% | 0.25d | 2009-12-28 | 2010-01-26 | 30d | 0d |  | 13148.5h | 12843h | 362 | 390 | 306 |
| 2 | 1.1 | 停气吹扫 |  | 2d | 2009-12-28 A | 2009-12-29 A |  | 100% |  | 2009-12-28 | 2009-12-29 | 2d |  | start no earlier than 2009-12-28 |  |  | 2 | 2 | 2 |
| 3 | 1.2 | 具备动火条件 | milestone | 0d | 2010-01-01 A | 2010-01-01 A | 2 | 100% |  | 2010-01-01 | 2010-01-01 | 0d |  | start no earlier than 2010-01-01 |  |  | 2 | 2 | 2 |
| 4 | 1.3 | **主要控制点** |  | 28d | 2009-12-28 A | 2010-01-24 |  |  | 28d | 2009-12-28 | 2010-01-24 | 28d | 5d |  |  |  | 98 | 98 | 46 |
| 5 | 1.3.1 | 安全阀检验开始 | milestone | 0d | 2009-12-28 A | 2009-12-28 A | 54SS | 100% |  | 2009-12-28 | 2009-12-28 | 0d |  |  |  |  | 2 | 2 | 2 |
| 6 | 1.3.2 | 安全阀检验结束 | milestone | 0d | 2010-01-10 A | 2010-01-10 A | 54FF | 100% |  | 2010-01-17 | 2010-01-17 | 0d |  |  |  |  | 2 | 2 | 2 |
| 7 | 1.3.3 | 压力管道检验开始 | milestone | 0d | 2009-12-28 A | 2009-12-28 A | 59SS | 100% |  | 2009-12-28 | 2009-12-28 | 0d |  |  |  |  | 2 | 2 | 2 |
| 8 | 1.3.4 | 压力管道检验结束 | milestone | 0d | 2010-01-18 | 2010-01-18 | 59FF |  |  | 2010-01-24 | 2010-01-24 | 0d | 11d |  |  |  | 2 | 2 |  |
| 9 | 1.3.5 | 压力表温度计检验开始 | milestone | 0d | 2009-12-29 A | 2009-12-29 A | 63SS | 100% |  | 2009-12-29 | 2009-12-29 | 0d |  |  |  |  | 2 | 2 | 2 |
| 10 | 1.3.6 | 压力表温度计检验结束 | milestone | 0d | 2010-01-12 | 2010-01-12 | 63FF |  |  | 2010-01-15 | 2010-01-15 | 0d | 17d |  |  |  | 2 | 2 |  |
| 11 | 1.3.7 | 压力容器检验开始 | milestone | 0d | 2009-12-28 A | 2009-12-28 A | 67SS | 100% |  | 2009-12-28 | 2009-12-28 | 0d |  |  |  |  | 2 | 2 | 2 |
| 12 | 1.3.8 | 压力容器检验结束 | milestone | 0d | 2010-01-18 | 2010-01-18 | 67FF |  |  | 2010-01-20 | 2010-01-20 | 0d | 11d |  |  |  | 2 | 2 |  |
| 13 | 1.3.9 | 换热器检修开始 | milestone | 0d | 2009-12-30 A | 2009-12-30 A | 72SS | 100% |  | 2009-12-30 | 2009-12-30 | 0d |  |  |  |  | 2 | 2 | 2 |
| 14 | 1.3.10 | 换热器检修结束 | milestone | 0d | 2010-01-08 | 2010-01-08 | 72FF |  |  | 2010-01-07 | 2010-01-07 | 0d | 21d |  |  |  | 2 | 2 |  |
| 15 | 1.3.11 | E1202中间冷却器检修开始 | milestone | 0d | 2009-12-28 A | 2009-12-28 A | 108SS | 100% |  | 2009-12-31 | 2009-12-31 | 0d |  |  |  |  | 2 | 2 | 2 |
| 16 | 1.3.12 | E1202中间冷却器检修结束 | milestone | 0d | 2010-01-18 | 2010-01-18 | 108FF |  |  | 2010-01-12 | 2010-01-12 | 0d | 11d |  |  |  | 2 | 2 |  |
| 17 | 1.3.13 | 容器拆人孔进人检验开始 | milestone | 0d | 2009-12-31 A | 2009-12-31 A | 114SS | 100% |  | 2009-12-31 | 2009-12-31 | 0d |  |  |  |  | 2 | 2 | 2 |
| 18 | 1.3.14 | 容器拆人孔进人检验结束 | milestone | 0d | 2010-01-14 | 2010-01-14 | 114FF |  |  | 2010-01-05 | 2010-01-05 | 0d | 15d |  |  |  | 2 | 2 |  |
| 19 | 1.3.15 | 低压分离器清理开始 | milestone | 0d | 2009-12-31 A | 2009-12-31 A | 139SS | 100% |  | 2009-12-31 | 2009-12-31 | 0d |  |  |  |  | 2 | 2 | 2 |
| 20 | 1.3.16 | 低压分离器清理结束 | milestone | 0d | 2010-01-08 | 2010-01-08 | 139FF |  |  | 2010-01-09 | 2010-01-09 | 0d | 21d |  |  |  | 2 | 2 |  |
| 21 | 1.3.17 | 袋滤器S5105更换滤袋开始 | milestone | 0d | 2010-01-14 | 2010-01-14 | 143SS |  |  | 2010-01-14 | 2010-01-14 | 0d | 16d |  |  |  | 2 | 2 |  |
| 22 | 1.3.18 | 袋滤器S5105更换滤袋结束 | milestone | 0d | 2010-01-18 | 2010-01-18 | 143FF |  |  | 2010-01-16 | 2010-01-16 | 0d | 11d |  |  |  | 2 | 2 |  |
| 23 | 1.3.19 | 0.8Mpa副产蒸汽外送开始 | milestone | 0d | 2009-12-28 A | 2009-12-28 A | 171SS | 100% |  | 2009-12-28 | 2009-12-28 | 0d |  |  |  |  | 2 | 2 | 2 |
| 24 | 1.3.20 | 0.8Mpa副产蒸汽外送结束 | milestone | 0d | 2010-01-18 | 2010-01-18 | 171FF |  |  | 2010-01-22 | 2010-01-22 | 0d | 11d |  |  |  | 2 | 2 |  |
| 25 | 1.3.21 | 导淋阀更换12个开始 | milestone | 0d | 2010-01-02 A | 2010-01-02 A | 173SS | 100% |  | 2010-01-02 | 2010-01-02 | 0d |  |  |  |  | 2 | 2 | 2 |
| 26 | 1.3.22 | 导淋阀更换12个结束 | milestone | 0d | 2010-01-17 | 2010-01-17 | 173FF |  |  | 2010-01-12 | 2010-01-12 | 0d | 12d |  |  |  | 2 | 2 |  |
| 27 | 1.3.23 | 换热器出入口加压力表、温度计13台开始 | milestone | 0d | 2010-01-02 A | 2010-01-02 A | 181SS | 100% |  | 2010-01-02 | 2010-01-02 | 0d |  |  |  |  | 2 | 2 | 2 |
| 28 | 1.3.24 | 换热器出入口加压力表、温度计13台结束 | milestone | 0d | 2010-01-16 | 2010-01-16 | 181FF |  |  | 2010-01-08 | 2010-01-08 | 0d | 13.98d |  |  |  | 2 | 2 |  |
| 29 | 1.3.25 | 催化剂泵检修开始 | milestone | 0d | 2009-12-30 A | 2009-12-30 A | 273SS | 100% |  | 2009-12-30 | 2009-12-30 | 0d |  |  |  |  | 2 | 2 | 2 |
| 30 | 1.3.26 | 催化剂泵检修结束 | milestone | 0d | 2010-01-03 A | 2010-01-03 A | 273FF | 100% |  | 2010-01-03 | 2010-01-03 | 0d |  |  |  |  | 2 | 2 | 2 |
| 31 | 1.3.27 | 冰机系统检修开始 | milestone | 0d | 2009-12-29 A | 2009-12-29 A | 280SS | 100% |  | 2009-12-29 | 2009-12-29 | 0d |  |  |  |  | 2 | 2 | 2 |
| 32 | 1.3.28 | 冰机系统检修结束 | milestone | 0d | 2010-01-23 | 2010-01-23 | 280FF |  |  | 2010-01-09 | 2010-01-09 | 0d | 7d |  |  |  | 2 | 2 |  |
| 33 | 1.3.29 | 振动筛检修开始 | milestone | 0d | 2009-12-31 A | 2009-12-31 A | 304SS | 100% |  | 2009-12-31 | 2009-12-31 | 0d |  |  |  |  | 2 | 2 | 2 |
| 34 | 1.3.30 | 振动筛检修结束 | milestone | 0d | 2010-01-10 | 2010-01-10 | 304FF |  |  | 2010-01-11 | 2010-01-11 | 0d | 19d |  |  |  | 2 | 2 |  |
| 35 | 1.3.31 | 脱气风机C5101A/B/C检修开始 | milestone | 0d | 2010-01-01 A | 2010-01-01 A | 314SS | 100% |  | 2010-01-01 | 2010-01-01 | 0d |  |  |  |  | 2 | 2 | 2 |
| 36 | 1.3.32 | 脱气风机C5101A/B/C检修结束 | milestone | 0d | 2010-01-03 A | 2010-01-03 A | 314FF | 100% |  | 2010-01-03 | 2010-01-03 | 0d |  |  |  |  | 2 | 2 | 2 |
| 37 | 1.3.33 | 输送风机检修开始 | milestone | 0d | 2010-01-04 A | 2010-01-04 A | 316SS | 100% |  | 2010-01-04 | 2010-01-04 | 0d |  |  |  |  | 2 | 2 | 2 |
| 38 | 1.3.34 | 输送风机检修结束 | milestone | 0d | 2010-01-15 | 2010-01-15 | 316FF |  |  | 2010-01-09 | 2010-01-09 | 0d | 14.5d |  |  |  | 2 | 2 |  |
| 39 | 1.3.35 | 超高压热电偶拆装开始 | milestone | 0d | 2010-01-03 A | 2010-01-03 | 321SS |  | 0d | 2010-01-03 | 2010-01-03 | 0d | 27d |  |  |  | 2 | 2 |  |
| 40 | 1.3.36 | 超高压热电偶拆装结束 | milestone | 0d | 2010-01-14 | 2010-01-14 | 321FF |  |  | 2010-01-14 | 2010-01-14 | 0d | 15d |  |  |  | 2 | 2 |  |
| 41 | 1.3.37 | 调节阀上下线开始 | milestone | 0d | 2010-01-01 A | 2010-01-01 A | 325SS | 100% |  | 2010-01-01 | 2010-01-01 | 0d |  |  |  |  | 2 | 2 | 2 |
| 42 | 1.3.38 | 调节阀上下线结束 | milestone | 0d | 2010-01-17 | 2010-01-17 | 325FF |  |  | 2010-01-17 | 2010-01-17 | 0d | 12d |  |  |  | 2 | 2 |  |
| 43 | 1.3.39 | 流量计拆装开始 | milestone | 0d | 2009-12-29 A | 2009-12-29 A | 329SS | 100% |  | 2009-12-29 | 2009-12-29 | 0d |  |  |  |  | 2 | 2 | 2 |
| 44 | 1.3.40 | 流量计拆装结束 | milestone | 0d | 2010-01-19 | 2010-01-19 | 329FF |  |  | 2010-01-19 | 2010-01-19 | 0d | 10d |  |  |  | 2 | 2 |  |
| 45 | 1.3.41 | 地坪修复开始 | milestone | 0d | 2010-01-14 | 2010-01-14 | 339SS |  |  | 2010-01-14 | 2010-01-14 | 0d | 16d |  |  |  | 2 | 2 |  |
| 46 | 1.3.42 | 地坪修复结束 | milestone | 0d | 2010-01-14 | 2010-01-14 | 339FF |  |  | 2010-01-22 | 2010-01-22 | 0d | 16d |  |  |  | 2 | 2 |  |
| 47 | 1.3.43 | 压缩遮阳棚拆除开始 | milestone | 0d | 2009-12-28 A | 2009-12-28 A | 340SS | 100% |  | 2009-12-28 | 2009-12-28 | 0d |  |  |  |  | 2 | 2 | 2 |
| 48 | 1.3.44 | 压缩遮阳棚拆除 | milestone | 0d | 2010-01-02 A | 2010-01-02 A | 340FF | 100% |  | 2010-01-02 | 2010-01-02 | 0d |  |  |  |  | 2 | 2 | 2 |
| 49 | 1.3.45 | 设备防腐开始 | milestone | 0d | 2010-01-14 | 2010-01-14 | 341SS |  |  | 2010-01-14 | 2010-01-14 | 0d | 16d |  |  |  | 2 | 2 |  |
| 50 | 1.3.46 | 设备防腐结束 | milestone | 0d | 2010-01-24 | 2010-01-24 | 341FF |  |  | 2010-01-22 | 2010-01-22 | 0d | 5d |  |  |  | 2 | 2 |  |
| 51 | 1.3.47 | 设备喷标识开始 | milestone | 0d | 2010-01-14 | 2010-01-14 | 342SS |  |  | 2010-01-14 | 2010-01-14 | 0d | 16d |  |  |  | 2 | 2 |  |
| 52 | 1.3.48 | 设备喷标识结束 | milestone | 0d | 2010-01-14 | 2010-01-14 | 342FF |  |  | 2010-01-22 | 2010-01-22 | 0d | 16d |  |  |  | 2 | 2 |  |

| ID | WBS | Task | Duration | Start | Finish | Predecessors | Complete | Baseline start | Baseline finish | Baseline duration | Constraint | Resources | Work | Actual work |
| --- | --- | --- | --- | --- | --- | --- | --- | --- | --- | --- | --- | --- | --- | --- |
| 53 | 1.4 | **检验项目** | 22d | 2009-12-28 A | 2010-01-18 A |  | 100% | 2009-12-28 | 2010-01-24 | 28d |  |  | 910h | 910h |
| 54 | 1.4.1 | **安全阀检验** | 19.65d | 2009-12-28 A | 2010-01-16 A |  | 100% | 2009-12-28 | 2010-01-17 | 21d | start no earlier than 2009-12-27 |  | 910h | 910h |
| 55 | 1.4.1.1 | 拆压缩、罐区、冷冻水系统150台 | 3d | 2009-12-28 A | 2009-12-30 A |  | 100% | 2009-12-28 | 2009-12-30 | 3d | start no earlier than 2009-12-28 | 管铆（静） [1000%]; 起重工（静） [200%]; 50t吊车（静） | 390h | 390h |
| 56 | 1.4.1.2 | 拆热水、挤压区54台 | 4d | 2009-12-31 A | 2010-01-03 A | 55 | 100% | 2009-12-31 | 2010-01-03 | 4d |  | 管铆（静） [1000%]; 起重工（静） [200%]; 50t吊车（静） | 520h | 520h |
| 57 | 1.4.1.3 | 安全阀效验、高压安全阀管口研磨 | 1d | 2010-01-04 A | 2010-01-04 A | 56 | 100% | 2010-01-04 | 2010-01-11 | 8d |  |  |  |  |
| 58 | 1.4.1.4 | 安全阀回装 | 9.65d | 2010-01-07 A | 2010-01-16 A | 57 | 100% | 2010-01-12 | 2010-01-17 | 6d | finish no earlier than 2010-01-16 |  |  |  |
| 59 | 1.4.2 | **压力管道检验** | 22d | 2009-12-28 A | 2010-01-18 A |  | 100% | 2009-12-28 | 2010-01-24 | 28d |  |  |  |  |
| 60 | 1.4.2.1 | 压缩区管道检验 | 8d | 2009-12-28 A | 2010-01-04 A |  | 100% | 2009-12-28 | 2010-01-04 | 8d | start no earlier than 2009-12-28 |  |  |  |
| 61 | 1.4.2.2 | 热水、高循区管道检验 | 11d | 2010-01-05 A | 2010-01-15 A | 60 | 100% | 2010-01-05 | 2010-01-17 | 13d |  |  |  |  |
| 62 | 1.4.2.3 | 挤压区管道检验 | 10d | 2010-01-09 A | 2010-01-18 A |  | 100% | 2010-01-18 | 2010-01-24 | 7d | start no earlier than 2010-01-09 |  |  |  |
| 63 | 1.4.3 | **压力表温度计检验** | 15d | 2009-12-29 A | 2010-01-12 A |  | 100% | 2009-12-29 | 2010-01-15 | 18d |  |  |  |  |
| 64 | 1.4.3.1 | 拆压力表温度计 | 3d | 2009-12-29 A | 2009-12-31 A |  | 100% | 2009-12-29 | 2009-12-31 | 3d | start no earlier than 2009-12-29 |  |  |  |
| 65 | 1.4.3.2 | 压力表、温度计离线效验 | 8d | 2010-01-01 A | 2010-01-08 A | 64 | 100% | 2010-01-01 | 2010-01-12 | 12d |  |  |  |  |
| 66 | 1.4.3.3 | 保温恢复、人孔复位、拆架 | 4d | 2010-01-09 A | 2010-01-12 A | 65 | 100% | 2010-01-13 | 2010-01-15 | 3d |  |  |  |  |
| 67 | 1.4.4 | **压力容器检验** | 22d | 2009-12-28 A | 2010-01-18 A |  | 100% | 2009-12-28 | 2010-01-20 | 24d |  |  |  |  |
| 68 | 1.4.4.1 | 搭架、拆保温、打麿 | 7d | 2009-12-28 A | 2010-01-03 A |  | 100% | 2009-12-28 | 2010-01-03 | 7d | start no earlier than 2009-12-28 |  |  |  |
| 69 | 1.4.4.2 | 压力容器检验 | 15d | 2010-01-04 A | 2010-01-18 A | 68 | 100% | 2010-01-04 | 2010-01-15 | 12d |  |  |  |  |
| 70 | 1.4.4.3 | 保温恢复、人孔复位、拆架 | 4d | 2010-01-15 A | 2010-01-18 A |  | 100% | 2010-01-16 | 2010-01-20 | 5d | start no earlier than 2010-01-15 |  |  |  |
| 71 | 1.5 | **容器及换热类设备检修项目** | 21.35d | 2009-12-28 A | 2010-01-18 A |  | 100% | 2009-12-30 | 2010-01-16 | 18d |  |  | 1895h | 1895h |
| 72 | 1.5.1 | **换热器** | 10d | 2009-12-30 A | 2010-01-08 A | 2 | 100% | 2009-12-30 | 2010-01-07 | 9d | start no earlier than 2009-12-30 |  | 145h | 145h |
| 73 | 1.5.1.1 | **C1201E1检修** | 8.5d | 2009-12-31 A | 2010-01-08 A |  | 100% | 2009-12-31 | 2010-01-05 | 6d |  |  | 20h | 20h |
| 74 | 1.5.1.1.1 | 拆卸封头 | 1d | 2009-12-31 A | 2009-12-31 A |  | 100% | 2009-12-31 | 2009-12-31 | 1d | start no earlier than 2009-12-31 | 管铆（静） [150%]; 起重工（静） [50%] | 20h | 20h |
| 75 | 1.5.1.1.2 | 高压水清洗 | 2d | 2010-01-04 A | 2010-01-06 A | 74 | 100% | 2010-01-01 | 2010-01-03 | 3d |  |  |  |  |
| 76 | 1.5.1.1.3 | 理化检验 | 1d | 2010-01-06 A | 2010-01-07 A | 75 | 100% | 2010-01-04 | 2010-01-04 | 1d |  |  |  |  |
| 77 | 1.5.1.1.4 | 回装封头 | 1d | 2010-01-07 A | 2010-01-08 A | 76 | 100% | 2010-01-05 | 2010-01-05 | 1d | start no earlier than 2010-01-06 |  |  |  |

Notes:
- 69: 不能打磨，故略有延迟

| ID | WBS | Task | Duration | Start | Finish | Predecessors | Complete | Baseline start | Baseline finish | Baseline duration | Constraint | Resources | Work | Actual work |
| --- | --- | --- | --- | --- | --- | --- | --- | --- | --- | --- | --- | --- | --- | --- |
| 78 | 1.5.1.2 | **C1201E2检修** | 9d | 2009-12-31 A | 2010-01-08 A |  | 100% | 2009-12-31 | 2010-01-05 | 6d |  |  | 40h | 40h |
| 79 | 1.5.1.2.1 | 拆卸封头 | 1d | 2009-12-31 A | 2009-12-31 A |  | 100% | 2009-12-31 | 2009-12-31 | 1d | start no earlier than 2009-12-31 | 管铆（静） [150%]; 起重工（静） [50%] | 20h | 20h |
| 80 | 1.5.1.2.2 | 抽芯 | 0.5d | 2010-01-01 A | 2010-01-01 A | 79 | 100% | 2010-01-01 | 2010-01-01 | 0.5d |  | 管铆（静） [300%]; 起重工（静） | 20h | 20h |
| 81 | 1.5.1.2.3 | 高压水清洗 | 2.5d | 2010-01-04 A | 2010-01-06 A | 80 | 100% | 2010-01-01 | 2010-01-03 | 2.5d |  |  |  |  |
| 82 | 1.5.1.2.4 | 理化检验 | 1d | 2010-01-07 A | 2010-01-07 A | 81 | 100% | 2010-01-04 | 2010-01-04 | 1d |  |  |  |  |
| 83 | 1.5.1.2.5 | 回装封头 | 1d | 2010-01-08 A | 2010-01-08 A | 82 | 100% | 2010-01-05 | 2010-01-05 | 1d | start no earlier than 2010-01-06 |  |  |  |
| 84 | 1.5.1.3 | **E1902检修** | 9d | 2009-12-30 A | 2010-01-07 A |  | 100% | 2009-12-30 | 2010-01-04 | 6d |  |  | 40h | 40h |
| 85 | 1.5.1.3.1 | 拆卸封头 | 1d | 2009-12-30 A | 2009-12-30 A |  | 100% | 2009-12-30 | 2009-12-30 | 1d | start no earlier than 2009-12-30 | 管铆（静） [300%]; 起重工（静） | 40h | 40h |
| 86 | 1.5.1.3.2 | 高压水清洗 | 3d | 2010-01-04 A | 2010-01-06 A | 85 | 100% | 2009-12-31 | 2010-01-03 | 4d |  |  |  |  |
| 87 | 1.5.1.3.3 | 回装封头 | 1d | 2010-01-07 A | 2010-01-07 A | 86 | 100% | 2010-01-04 | 2010-01-04 | 1d |  |  |  |  |
| 88 | 1.5.1.4 | **E5102A/B检修** | 6.5d | 2010-01-02 A | 2010-01-08 A |  | 100% | 2010-01-02 | 2010-01-07 | 6d |  |  | 15h | 15h |
| 89 | 1.5.1.4.1 | 拆卸封头 | 1d | 2010-01-02 A | 2010-01-02 A |  | 100% | 2010-01-02 | 2010-01-02 | 1d | start no earlier than 2010-01-02 | 管铆（静） [75%]; 起重工（静） [25%] | 10h | 10h |
| 90 | 1.5.1.4.2 | 高压水清洗 | 3d | 2010-01-04 A | 2010-01-07 A | 89 | 100% | 2010-01-03 | 2010-01-05 | 3d |  |  |  |  |
| 91 | 1.5.1.4.3 | 理化检验 | 0.5d | 2010-01-07 A | 2010-01-07 A | 90 | 100% | 2010-01-06 | 2010-01-06 | 1d |  |  |  |  |
| 92 | 1.5.1.4.4 | 回装封头 | 0.5d | 2010-01-08 A | 2010-01-08 A | 91 | 100% | 2010-01-07 | 2010-01-07 | 1d | start no earlier than 2010-01-08 | 管铆（静） [75%]; 起重工（静） [25%] | 5h | 5h |
| 93 | 1.5.1.5 | **E5103A/B检修** | 7d | 2010-01-02 A | 2010-01-08 A |  | 100% | 2010-01-02 | 2010-01-07 | 6d |  |  | 10h | 10h |
| 94 | 1.5.1.5.1 | 拆卸封头 | 1d | 2010-01-02 A | 2010-01-02 A |  | 100% | 2010-01-02 | 2010-01-02 | 1d | start no earlier than 2010-01-02 | 管铆（静） [75%]; 起重工（静） [25%] | 10h | 10h |
| 95 | 1.5.1.5.2 | 高压水清洗 | 3d | 2010-01-04 A | 2010-01-06 A | 94 | 100% | 2010-01-03 | 2010-01-05 | 3d |  |  |  |  |
| 96 | 1.5.1.5.3 | 理化检验 | 1d | 2010-01-07 A | 2010-01-07 A | 95 | 100% | 2010-01-06 | 2010-01-06 | 1d |  |  |  |  |
| 97 | 1.5.1.5.4 | 回装封头 | 1d | 2010-01-08 A | 2010-01-08 A | 96 | 100% | 2010-01-07 | 2010-01-07 | 1d |  |  |  |  |
| 98 | 1.5.1.6 | **E5104A/B检修** | 7d | 2010-01-02 A | 2010-01-08 A |  | 100% | 2010-01-02 | 2010-01-07 | 6d |  |  | 10h | 10h |
| 99 | 1.5.1.6.1 | 拆卸封头 | 1d | 2010-01-02 A | 2010-01-02 A |  | 100% | 2010-01-02 | 2010-01-02 | 1d | start no earlier than 2010-01-02 | 管铆（静） [75%]; 起重工（静） [25%] | 10h | 10h |
| 100 | 1.5.1.6.2 | 高压水清洗 | 3d | 2010-01-04 A | 2010-01-06 A | 99 | 100% | 2010-01-03 | 2010-01-05 | 3d |  |  |  |  |
| 101 | 1.5.1.6.3 | 理化检验 | 1d | 2010-01-07 A | 2010-01-07 A | 100 | 100% | 2010-01-06 | 2010-01-06 | 1d |  |  |  |  |
| 102 | 1.5.1.6.4 | 回装封头 | 1d | 2010-01-08 A | 2010-01-08 A | 101 | 100% | 2010-01-07 | 2010-01-07 | 1d |  |  |  |  |

Notes:
- 78: 压缩区兼职

| ID | WBS | Task | Type | Duration | Start | Finish | Predecessors | Complete | Baseline start | Baseline finish | Baseline duration | Constraint | Resources | Work | Actual work |
| --- | --- | --- | --- | --- | --- | --- | --- | --- | --- | --- | --- | --- | --- | --- | --- |
| 103 | 1.5.1.7 | **E5101A/B/C/D检修** |  | 7d | 2010-01-02 A | 2010-01-08 A |  | 100% | 2010-01-02 | 2010-01-07 | 6d |  |  | 10h | 10h |
| 104 | 1.5.1.7.1 | 拆卸封头 |  | 1d | 2010-01-02 A | 2010-01-02 A |  | 100% | 2010-01-02 | 2010-01-02 | 1d | start no earlier than 2010-01-02 | 管铆（静） [75%]; 起重工（静） [25%] | 10h | 10h |
| 105 | 1.5.1.7.2 | 高压水清洗 |  | 3d | 2010-01-04 A | 2010-01-06 A | 104 | 100% | 2010-01-03 | 2010-01-05 | 3d |  |  |  |  |
| 106 | 1.5.1.7.3 | 理化检验 |  | 1d | 2010-01-07 A | 2010-01-07 A | 105 | 100% | 2010-01-06 | 2010-01-06 | 1d |  |  |  |  |
| 107 | 1.5.1.7.4 | 回装封头 |  | 1d | 2010-01-08 A | 2010-01-08 A | 106 | 100% | 2010-01-07 | 2010-01-07 | 1d |  |  |  |  |
| 108 | 1.5.2 | **E1202中间冷却器** |  | 21.35d | 2009-12-28 A | 2010-01-18 A |  | 100% | 2009-12-31 | 2010-01-12 | 13d |  |  | 1420h | 1420h |
| 109 | 1.5.2.1 | 拆中冷器弯头48个 |  | 1d | 2009-12-28 A | 2009-12-29 A |  | 100% | 2009-12-31 | 2010-01-04 | 5d | finish no earlier than 2009-12-29 | 管铆（静） [800%]; 起重工（静）; 25吨吊车（静） | 100h | 100h |
| 110 | 1.5.2.2 | 高压水清洗 |  | 3d | 2010-01-03 A | 2010-01-06 A | 109FS-2d | 100% | 2010-01-03 | 2010-01-06 | 4d | start no earlier than 2009-12-31 |  |  |  |
| 111 | 1.5.2.3 | 法兰面及透镜垫研磨 |  | 3d | 2010-01-05 A | 2010-01-08 A | 110FS-2d | 100% | 2010-01-05 | 2010-01-08 | 4d | start no earlier than 2010-01-03 | 管铆（静） [800%]; 起重工（静） | 270h | 270h |
| 112 | 1.5.2.4 | 弯头回装 |  | 10.5d | 2010-01-08 A | 2010-01-18 A | 111FS-2d | 100% | 2010-01-07 | 2010-01-12 | 6d |  | 管铆（静） [800%]; 起重工（静）; 25吨吊车（静） | 1050h | 1050h |
| 113 | 1.5.2.5 | 中冷器交出 | milestone | 0d | 2010-01-18 A | 2010-01-18 A | 112 | 100% | 2010-01-12 | 2010-01-12 | 0d |  |  |  |  |
| 114 | 1.5.3 | **容器拆人孔进人检验** |  | 15d | 2009-12-31 A | 2010-01-14 A | 2 | 100% | 2009-12-31 | 2010-01-05 | 6d |  |  | 180h | 180h |
| 115 | 1.5.3.1 | **V1803** |  | 13d | 2009-12-31 A | 2010-01-12 A |  | 100% | 2009-12-31 | 2010-01-03 | 4d |  |  | 30h | 30h |
| 116 | 1.5.3.1.1 | 拆人孔 |  | 1d | 2009-12-31 A | 2009-12-31 A |  | 100% | 2009-12-31 | 2009-12-31 | 1d | start no earlier than 2009-12-31 | 管铆（静） [150%] | 15h | 15h |
| 117 | 1.5.3.1.2 | 清理检查 |  | 2d | 2010-01-01 A | 2010-01-02 A |  | 100% | 2010-01-01 | 2010-01-02 | 2d | start no earlier than 2010-01-01 |  |  |  |
| 118 | 1.5.3.1.3 | 装人孔 |  | 1d | 2010-01-12 A | 2010-01-12 A | 117 | 100% | 2010-01-03 | 2010-01-03 | 1d | start no earlier than 2010-01-12 | 管铆（静） [150%] | 15h | 15h |
| 119 | 1.5.3.2 | **V1804** |  | 15d | 2009-12-31 A | 2010-01-14 A |  | 100% | 2009-12-31 | 2010-01-03 | 4d |  |  | 30h | 30h |
| 120 | 1.5.3.2.1 | 拆人孔 |  | 1d | 2009-12-31 A | 2009-12-31 A |  | 100% | 2009-12-31 | 2009-12-31 | 1d | start no earlier than 2009-12-31 | 管铆（静） [150%] | 15h | 15h |
| 121 | 1.5.3.2.2 | 清理检查 |  | 2d | 2010-01-01 A | 2010-01-02 A | 120 | 100% | 2010-01-01 | 2010-01-02 | 2d |  |  |  |  |
| 122 | 1.5.3.2.3 | 装人孔 |  | 1d | 2010-01-14 A | 2010-01-14 A | 121 | 100% | 2010-01-03 | 2010-01-03 | 1d | start no earlier than 2010-01-14 | 管铆（静） [150%] | 15h | 15h |
| 123 | 1.5.3.3 | **V1810** |  | 14d | 2010-01-01 A | 2010-01-14 A |  | 100% | 2010-01-01 | 2010-01-04 | 4d |  |  | 30h | 30h |
| 124 | 1.5.3.3.1 | 拆人孔 |  | 1d | 2010-01-01 A | 2010-01-01 A |  | 100% | 2010-01-01 | 2010-01-01 | 1d | start no earlier than 2010-01-01 | 管铆（静） [150%] | 15h | 15h |
| 125 | 1.5.3.3.2 | 清理检查 |  | 2d | 2010-01-02 A | 2010-01-03 A | 124 | 100% | 2010-01-02 | 2010-01-03 | 2d |  |  |  |  |
| 126 | 1.5.3.3.3 | 装人孔 |  | 1d | 2010-01-14 A | 2010-01-14 A | 125 | 100% | 2010-01-04 | 2010-01-04 | 1d | start no earlier than 2010-01-14 | 管铆（静） [150%] | 15h | 15h |

Notes:
- 110: E1202A/B高压水清洗进度缓慢，极大地影响了E1202A/B的检修进度
- 111: 兼职

| ID | WBS | Task | Type | Duration | Start | Finish | Predecessors | Complete | Baseline start | Baseline finish | Baseline duration | Constraint | Resources | Work | Actual work | Cost | Baseline cost | Actual cost |
| --- | --- | --- | --- | --- | --- | --- | --- | --- | --- | --- | --- | --- | --- | --- | --- | --- | --- | --- |
| 127 | 1.5.3.4 | **S1204** |  | 11d | 2010-01-01 A | 2010-01-11 A |  | 100% | 2010-01-01 | 2010-01-04 | 4d |  |  | 30h | 30h |  |  |  |
| 128 | 1.5.3.4.1 | 拆人孔 |  | 1d | 2010-01-01 A | 2010-01-01 A |  | 100% | 2010-01-01 | 2010-01-01 | 1d | start no earlier than 2010-01-01 | 管铆（静） [150%] | 15h | 15h |  |  |  |
| 129 | 1.5.3.4.2 | 清理检查 |  | 2d | 2010-01-02 A | 2010-01-03 A | 128 | 100% | 2010-01-02 | 2010-01-03 | 2d |  |  |  |  |  |  |  |
| 130 | 1.5.3.4.3 | 装人孔 |  | 1d | 2010-01-11 A | 2010-01-11 A | 129 | 100% | 2010-01-04 | 2010-01-04 | 1d | start no earlier than 2010-01-11 | 管铆（静） [150%] | 15h | 15h |  |  |  |
| 131 | 1.5.3.5 | **C1201S1** |  | 10d | 2010-01-02 A | 2010-01-11 A |  | 100% | 2010-01-02 | 2010-01-05 | 4d |  |  | 30h | 30h |  |  |  |
| 132 | 1.5.3.5.1 | 拆人孔 |  | 1d | 2010-01-02 A | 2010-01-02 A |  | 100% | 2010-01-02 | 2010-01-02 | 1d | start no earlier than 2010-01-02 | 管铆（静） [150%] | 15h | 15h |  |  |  |
| 133 | 1.5.3.5.2 | 清理检查 |  | 2d | 2010-01-03 A | 2010-01-04 A | 132 | 100% | 2010-01-03 | 2010-01-04 | 2d |  |  |  |  |  |  |  |
| 134 | 1.5.3.5.3 | 装人孔 |  | 1d | 2010-01-11 A | 2010-01-11 A | 133 | 100% | 2010-01-05 | 2010-01-05 | 1d | start no earlier than 2010-01-11 | 管铆（静） [150%] | 15h | 15h |  |  |  |
| 135 | 1.5.3.6 | **C1201S2** |  | 8d | 2010-01-02 A | 2010-01-09 A |  | 100% | 2010-01-02 | 2010-01-05 | 4d |  |  | 30h | 30h |  |  |  |
| 136 | 1.5.3.6.1 | 拆人孔 |  | 1d | 2010-01-02 A | 2010-01-02 A |  | 100% | 2010-01-02 | 2010-01-02 | 1d | start no earlier than 2010-01-02 | 管铆（静） [150%] | 15h | 15h |  |  |  |
| 137 | 1.5.3.6.2 | 清理检查 |  | 2d | 2010-01-03 A | 2010-01-04 A | 136 | 100% | 2010-01-03 | 2010-01-04 | 2d |  |  |  |  |  |  |  |
| 138 | 1.5.3.6.3 | 装人孔 |  | 1d | 2010-01-09 A | 2010-01-09 A | 137 | 100% | 2010-01-05 | 2010-01-05 | 1d | start no earlier than 2010-01-09 | 管铆（静） [150%] | 15h | 15h |  |  |  |
| 139 | 1.5.4 | **低压分离器清理** |  | 9d | 2009-12-31 A | 2010-01-08 A | 2 | 100% | 2009-12-31 | 2010-01-09 | 10d |  |  |  |  |  |  |  |
| 140 | 1.5.4.1 | 出口管加盲板 |  | 1d | 2009-12-31 A | 2009-12-31 A |  | 100% | 2009-12-31 | 2009-12-31 | 1d | start no earlier than 2009-12-31 |  |  |  |  |  |  |
| 141 | 1.5.4.2 | 封头拆吊、搭架、清理 |  | 5d | 2010-01-01 A | 2010-01-05 A | 140 | 100% | 2010-01-01 | 2010-01-05 | 5d |  |  |  |  |  |  |  |
| 142 | 1.5.4.3 | 封头回装、拆架、拆盲板 |  | 3d | 2010-01-06 A | 2010-01-08 A | 141 | 100% | 2010-01-06 | 2010-01-09 | 4d |  |  |  |  |  |  |  |
| 143 | 1.5.5 | **袋滤器S5105更换滤袋** |  | 5d | 2010-01-14 A | 2010-01-18 A | 2 | 100% | 2010-01-14 | 2010-01-16 | 3d |  |  | 150h | 150h |  |  |  |
| 144 | 1.5.5.1 | 更换滤袋108条 |  | 5d | 2010-01-14 A | 2010-01-18 A |  | 100% | 2010-01-14 | 2010-01-16 | 3d | start no earlier than 2010-01-14 | 管铆（静） [300%] | 150h | 150h |  |  |  |
| 145 | 1.6 | **反应类设备** |  | 19d | 2009-12-31 A | 2010-01-18 A | 2 | 100% | 2009-12-31 | 2010-01-23 | 24d |  |  | 740h | 740h | 12 | 12 | 12 |
| 146 | 1.6.1 | **R13101检修** |  | 19d | 2009-12-31 A | 2010-01-18 A |  | 100% | 2009-12-31 | 2010-01-23 | 24d |  |  | 740h | 740h | 12 | 12 | 12 |
| 147 | 1.6.1.1 | 拆预热器弯头16个 |  | 3d | 2009-12-31 A | 2010-01-02 A |  | 100% | 2009-12-31 | 2010-01-02 | 3d | start no earlier than 2009-12-31 | 管铆（静） [700%]; 起重工（静） | 240h | 240h | 2 | 2 | 2 |
| 148 | 1.6.1.2 | 高压水清洗、内管检查3根 |  | 3d | 2010-01-03 A | 2010-01-05 A | 147 | 100% | 2010-01-03 | 2010-01-05 | 3d |  |  |  |  | 2 | 2 | 2 |
| 149 | 1.6.1.3 | 弯头回装 |  | 5d | 2010-01-06 A | 2010-01-10 A | 148 | 100% | 2010-01-06 | 2010-01-10 | 5d |  | 管铆（静） [700%]; 起重工（静） | 400h | 400h | 2 | 2 | 2 |
| 150 | 1.6.1.4 | 支架检查、开排水孔及保温修复 |  | 2.5d | 2010-01-15 A | 2010-01-17 A | 149 | 100% | 2010-01-11 | 2010-01-16 | 6d | start no earlier than 2010-01-15 | 管铆（静） [300%]; 焊工（静） | 100h | 100h | 2 | 2 | 2 |
| 151 | 1.6.1.5 | 支架防腐 |  | 1.5d | 2010-01-17 A | 2010-01-18 A | 150 | 100% | 2010-01-17 | 2010-01-23 | 7d |  |  |  |  | 2 | 2 | 2 |
| 152 | 1.6.1.6 | 反应器交出 | milestone | 0d | 2010-01-18 A | 2010-01-18 A | 151 | 100% | 2010-01-23 | 2010-01-23 | 0d |  |  |  |  | 2 | 2 | 2 |

| ID | WBS | Task | Type | Duration | Start | Finish | Predecessors | Complete | Remaining | Baseline start | Baseline finish | Baseline duration | Total slack | Constraint | Resources | Work | Actual work | Cost | Baseline cost | Actual cost |
| --- | --- | --- | --- | --- | --- | --- | --- | --- | --- | --- | --- | --- | --- | --- | --- | --- | --- | --- | --- | --- |
| 153 | 1.7 | **管线阀门类设备检修** |  | 29d | 2009-12-28 A | 2010-01-25 |  | 99% | 0.37d | 2009-12-28 | 2010-01-26 | 30d | 4d |  |  | 5155.5h | 4850h | 72 | 72 | 70 |
| 154 | 1.7.1 | **界区盲板拆装(8个)** |  | 29d | 2009-12-28 A | 2010-01-25 |  | 50% | 14.5d | 2009-12-28 | 2010-01-22 | 26d | 4d |  |  | 240h | 120h | 4 | 4 | 2 |
| 155 | 1.7.1.1 | 装盲板 |  | 2d | 2009-12-28 A | 2009-12-29 A |  | 100% |  | 2009-12-28 | 2009-12-29 | 2d |  | start no earlier than 2009-12-28 | 管铆（静） [600%] | 120h | 120h | 2 | 2 | 2 |
| 156 | 1.7.1.2 | 拆盲板 |  | 2d | 2010-01-24 | 2010-01-25 |  |  |  | 2010-01-21 | 2010-01-22 | 2d | 4d | start no earlier than 2010-01-24 | 管铆（静） [600%] | 120h |  | 2 | 2 |  |
| 157 | 1.7.2 | **二次机出口至反应器入口管线清理** |  | 22d | 2009-12-28 A | 2010-01-18 A |  | 100% |  | 2009-12-28 | 2010-01-23 | 27d |  |  |  | 360h | 360h | 14 | 14 | 14 |
| 158 | 1.7.2.1 | 拆二次机出口弯管10根 |  | 2d | 2009-12-28 A | 2009-12-29 A |  | 100% |  | 2009-12-28 | 2009-12-29 | 2d |  | start no earlier than 2009-12-28 | 管铆（静） [600%] | 120h | 120h | 2 | 2 | 2 |
| 159 | 1.7.2.2 | 拆反应墙外高压法兰14个 |  | 2d | 2009-12-30 A | 2009-12-31 A | 158 | 100% |  | 2009-12-30 | 2009-12-31 | 2d |  |  | 管铆（静） [600%] | 120h | 120h | 2 | 2 | 2 |
| 160 | 1.7.2.3 | 高压水清洗及拆反应墙内管线法兰14个 |  | 4d | 2010-01-01 A | 2010-01-05 A | 159 | 100% |  | 2010-01-01 | 2010-01-04 | 4d |  |  |  |  |  | 2 | 2 | 2 |
| 161 | 1.7.2.4 | 反应墙内外法兰回装 |  | 4.5d | 2010-01-05 A | 2010-01-09 A | 160 | 100% |  | 2010-01-05 | 2010-01-09 | 5d |  |  |  |  |  | 2 | 2 | 2 |
| 162 | 1.7.2.5 | 外包项目 |  | 4d | 2010-01-10 A | 2010-01-13 A | 161 | 100% |  | 2010-01-10 | 2010-01-17 | 8d |  |  |  |  |  | 2 | 2 | 2 |
| 163 | 1.7.2.6 | 二次机弯管回装 |  | 1d | 2010-01-17 A | 2010-01-17 A | 162 | 100% |  | 2010-01-18 | 2010-01-21 | 3.5d |  | start no earlier than 2010-01-17 | 管铆（静） [600%] | 60h | 60h | 2 | 2 | 2 |
| 164 | 1.7.2.7 | 一段出入口管线加固4根 |  | 1d | 2010-01-18 A | 2010-01-18 A | 163 | 100% |  | 2010-01-21 | 2010-01-23 | 2.5d |  |  | 管铆（静） [600%] | 60h | 60h | 2 | 2 | 2 |
| 165 | 1.7.3 | **冷冻水管线及阀门更换** |  | 22d | 2009-12-28 A | 2010-01-18 A |  | 100% |  | 2009-12-28 | 2010-01-22 | 26d |  |  |  | 1890h | 1890h | 10 | 10 | 10 |
| 166 | 1.7.3.1 | 拆冷冻水系统保冷 |  | 3d | 2009-12-28 A | 2009-12-30 A |  | 100% |  | 2009-12-28 | 2009-12-30 | 3d |  | start no earlier than 2009-12-28 | 管铆（静） [500%]; 焊工（静） [400%] | 270h | 270h | 2 | 2 | 2 |
| 167 | 1.7.3.2 | PO输送区阀门更换205个，冷冻水罐更换一个 |  | 6d | 2009-12-31 A | 2010-01-05 A | 166 | 100% |  | 2009-12-31 | 2010-01-05 | 6d |  |  | 管铆（静） [500%]; 焊工（静） [400%] | 540h | 540h | 2 | 2 | 2 |
| 168 | 1.7.3.3 | 催化剂区阀门123更换更换及管线更换130米 |  | 7d | 2010-01-06 A | 2010-01-12 A | 167 | 100% |  | 2010-01-06 | 2010-01-13 | 8d |  |  | 管铆（静） [500%]; 焊工（静） [400%] | 630h | 630h | 2 | 2 | 2 |
| 169 | 1.7.3.4 | 冷冻管线控制点 | milestone | 0d | 2010-01-12 A | 2010-01-12 A | 168 | 100% |  | 2010-01-13 | 2010-01-13 | 0d |  |  |  |  |  | 2 | 2 | 2 |
| 170 | 1.7.3.5 | 保冷系统恢复 |  | 5d | 2010-01-14 A | 2010-01-18 A | 169 | 100% |  | 2010-01-14 | 2010-01-22 | 9d |  | start no earlier than 2010-01-14 | 管铆（静） [500%]; 焊工（静） [400%] | 450h | 450h | 2 | 2 | 2 |
| 171 | 1.7.4 | 0.8Mpa副产蒸汽外送 |  | 22d | 2009-12-28 A | 2010-01-18 A |  | 100% |  | 2009-12-28 | 2010-01-22 | 26d |  | start no earlier than 2009-12-28 |  |  |  |  |  |  |
| 172 | 1.7.5 | V1850加自动补水阀 |  | 2d | 2010-01-01 A | 2010-01-02 A |  | 100% |  | 2010-01-01 | 2010-01-02 | 2d |  | start no earlier than 2010-01-01 |  |  |  | 2 | 2 | 2 |
| 173 | 1.7.6 | **导淋阀更换12个** |  | 9d | 2010-01-09 A | 2010-01-17 A |  | 100% |  | 2010-01-02 | 2010-01-12 | 11d |  |  |  |  |  |  |  |  |
| 174 | 1.7.6.1 | 热水区4个 |  | 2d | 2010-01-09 A | 2010-01-10 A |  | 100% |  | 2010-01-02 | 2010-01-03 | 2d |  | start no earlier than 2010-01-09 |  |  |  |  |  |  |
| 175 | 1.7.6.2 | 高循5个 |  | 4d | 2010-01-12 A | 2010-01-15 A | 174 | 100% |  | 2010-01-04 | 2010-01-05 | 2d |  | start no earlier than 2010-01-12 |  |  |  |  |  |  |
| 176 | 1.7.6.3 | 外包项目 |  | 1d | 2010-01-16 A | 2010-01-16 A | 175 | 100% |  | 2010-01-06 | 2010-01-10 | 5d |  |  |  |  |  |  |  |  |
| 177 | 1.7.6.4 | 挤压3个 |  | 1d | 2010-01-17 A | 2010-01-17 A | 176 | 100% |  | 2010-01-11 | 2010-01-12 | 2d |  |  |  |  |  |  |  |  |
| 178 | 1.7.7 | 疏水器更换10个 |  | 2.5d | 2010-01-15 A | 2010-01-17 A |  | 100% |  | 2010-01-06 | 2010-01-08 | 2.5d |  | start no earlier than 2010-01-15 | 管铆（静） [200%]; 焊工（静） [200%] | 100h | 100h | 2 | 2 | 2 |
| 179 | 1.7.8 | 漏点拆夹具补焊11个 |  | 2.5d | 2010-01-15 A | 2010-01-17 A |  | 100% |  | 2010-01-08 | 2010-01-10 | 2.5d |  | start no earlier than 2010-01-15 | 管铆（静） [200%]; 焊工（静） [200%] | 100h | 100h | 2 | 2 | 2 |
| 180 | 1.7.9 | 凝液改脱盐水系统改造 |  | 8d | 2010-01-11 A | 2010-01-18 A |  | 100% |  | 2010-01-13 | 2010-01-15 | 3d |  | start no earlier than 2010-01-11 | 管铆（静） [200%]; 焊工（静） [200%] | 320h | 320h | 2 | 2 | 2 |
| 181 | 1.7.10 | 换热器出入口加压力表、温度计13台 |  | 5d | 2010-01-11 A | 2010-01-16 A |  | 100% |  | 2010-01-02 | 2010-01-08 | 7d |  | start no earlier than 2010-01-11 | 管铆（静） [200%]; 焊工（静） [200%] | 200h | 200h |  |  |  |

| ID | WBS | Task | Duration | Start | Finish | Predecessors | Complete | Remaining | Baseline start | Baseline finish | Baseline duration | Total slack | Constraint | Resources | Work | Actual work | Cost | Baseline cost | Actual cost |
| --- | --- | --- | --- | --- | --- | --- | --- | --- | --- | --- | --- | --- | --- | --- | --- | --- | --- | --- | --- |
| 182 | 1.7.11 | **脉冲阀更换1个** | 11d | 2010-01-04 A | 2010-01-14 A |  | 100% |  | 2010-01-04 | 2010-01-14 | 11d |  |  |  | 120h | 120h | 6 | 6 | 6 |
| 183 | 1.7.11.1 | 拆 | 1d | 2010-01-04 A | 2010-01-04 A |  | 100% |  | 2010-01-04 | 2010-01-04 | 1d |  | start no earlier than 2010-01-04 | 管铆（静） [500%]; 起重工（静） | 60h | 60h | 2 | 2 | 2 |
| 184 | 1.7.11.2 | 基础重新灌浆 | 8d | 2010-01-05 A | 2010-01-12 A | 183 | 100% |  | 2010-01-05 | 2010-01-13 | 9d |  |  |  |  |  | 2 | 2 | 2 |
| 185 | 1.7.11.3 | 装 | 1d | 2010-01-14 A | 2010-01-14 A | 184 | 100% |  | 2010-01-14 | 2010-01-14 | 1d |  | start no earlier than 2010-01-14 | 管铆（静） [500%]; 起重工（静） | 60h | 60h | 2 | 2 | 2 |
| 186 | 1.7.12 | **液压阀更换10个** | 9d | 2010-01-05 A | 2010-01-13 A |  | 100% |  | 2010-01-05 | 2010-01-13 | 9d |  |  |  | 300h | 300h | 6 | 6 | 6 |
| 187 | 1.7.12.1 | XV14107漏蒸汽处理 | 4d | 2010-01-05 A | 2010-01-08 A |  | 100% |  | 2010-01-05 | 2010-01-07 | 3d |  | start no earlier than 2010-01-05 |  |  |  | 2 | 2 | 2 |
| 188 | 1.7.12.2 | PV15307更换 | 1d | 2010-01-12 A | 2010-01-12 A | 187 | 100% |  | 2010-01-08 | 2010-01-09 | 2d |  | start no earlier than 2010-01-12 | 管铆（静） [500%]; 起重工（静） | 60h | 60h | 2 | 2 | 2 |
| 189 | 1.7.12.3 | 其它液压阀检查8个 | 4d | 2010-01-10 A | 2010-01-13 A |  | 100% |  | 2010-01-10 | 2010-01-13 | 4d |  | start no earlier than 2010-01-10 | 管铆（静） [500%]; 起重工（静） | 240h | 240h | 2 | 2 | 2 |
| 190 | 1.7.13 | 爆破片更换20个 | 3d | 2010-01-16 A | 2010-01-18 A |  | 100% |  | 2010-01-24 | 2010-01-26 | 3d |  | start no earlier than 2010-01-16 | 管铆（静） [200%]; 起重工（静） | 90h | 90h | 2 | 2 | 2 |
| 191 | 1.7.14 | **热水泵出入口阀门修复8个** | 18d | 2009-12-31 A | 2010-01-17 A |  | 100% |  | 2009-12-31 | 2010-01-17 | 18d |  |  |  | 200h | 200h | 6 | 6 | 6 |
| 192 | 1.7.14.1 | P1801A/B、P1802A/B出入口阀拆卸 | 3d | 2009-12-31 A | 2010-01-02 A |  | 100% |  | 2009-12-31 | 2010-01-02 | 3d |  | start no earlier than 2009-12-31 | 管铆（静） [400%]; 起重工（静） | 150h | 150h | 2 | 2 | 2 |
| 193 | 1.7.14.2 | 拆下阀门送修 | 9d | 2010-01-08 A | 2010-01-16 A | 192 | 100% |  | 2010-01-03 | 2010-01-13 | 11d |  | start no earlier than 2010-01-08 |  |  |  | 2 | 2 | 2 |
| 194 | 1.7.14.3 | 阀门回装 | 1d | 2010-01-17 A | 2010-01-17 A | 193 | 100% |  | 2010-01-14 | 2010-01-17 | 4d |  |  | 管铆（静） [400%]; 起重工（静） | 50h | 50h | 2 | 2 | 2 |
| 195 | 1.7.15 | **V1801/02回水阀更换15个** | 10d | 2009-12-31 A | 2010-01-09 A |  | 100% |  | 2009-12-31 | 2010-01-07 | 8d |  |  |  |  |  | 4 | 4 | 4 |
| 196 | 1.7.15.1 | V1801回水阀更换7个 | 5d | 2009-12-31 A | 2010-01-05 A |  | 100% |  | 2009-12-31 | 2010-01-03 | 4d |  | start no earlier than 2009-12-31 |  |  |  | 2 | 2 | 2 |
| 197 | 1.7.15.2 | V1802回水阀更换8个 | 4d | 2010-01-06 A | 2010-01-09 A | 196 | 100% |  | 2010-01-04 | 2010-01-07 | 4d |  | start no earlier than 2010-01-06 |  |  |  | 2 | 2 | 2 |
| 198 | 1.7.16 | **热水阀门填料更换10个** | 1d | 2010-01-16 A | 2010-01-16 A |  | 100% |  | 2010-01-16 | 2010-01-18 | 3d |  |  |  |  |  | 4 | 4 | 4 |
| 199 | 1.7.16.1 | P1850A/B出入口阀更换填料4个 | 1d | 2010-01-16 A | 2010-01-16 A |  | 100% |  | 2010-01-16 | 2010-01-16 | 1d |  | start no earlier than 2010-01-16 |  |  |  | 2 | 2 | 2 |
| 200 | 1.7.16.2 | V1801/02回水阀更换填料6个 | 1d | 2010-01-16 A | 2010-01-16 A |  | 100% |  | 2010-01-17 | 2010-01-18 | 2d |  | start no earlier than 2010-01-16 |  |  |  | 2 | 2 | 2 |
| 201 | 1.7.17 | **热水泵入口过滤器清理** | 12d | 2009-12-28 A | 2010-01-08 A |  | 100% |  | 2009-12-28 | 2010-01-08 | 12d |  |  |  | 840h | 840h | 2 | 2 | 2 |
| 202 | 1.7.17.1 | P1801A/B、P1802A/B、P1803A/B、P1804A/B、P1805A/B、P1810A/B、P1850A/B入口过滤器清理 | 12d | 2009-12-28 A | 2010-01-08 A |  | 100% |  | 2009-12-28 | 2010-01-08 | 12d |  | start no earlier than 2009-12-28 | 管铆（静） [600%]; 起重工（静） | 840h | 840h | 2 | 2 | 2 |
| 203 | 1.7.18 | **呼吸阀检修** | 5.65d | 2009-12-31 A | 2010-01-05 |  | 99% | 0d | 2009-12-31 | 2010-01-02 | 3d | 0d |  | 管铆（静） [600%]; 起重工（静） | 395.5h | 210h | 6 | 6 | 6 |
| 204 | 1.7.18.1 | 呼吸阀拆除 | 1.65d | 2009-12-31 A | 2010-01-05 A |  | 100% |  | 2009-12-31 | 2009-12-31 | 1d |  | start no earlier than 2009-12-31 |  |  |  | 2 | 2 | 2 |
| 205 | 1.7.18.2 | 呼吸阀清理 | 1d | 2010-01-01 A | 2010-01-01 A | 204 | 100% |  | 2010-01-01 | 2010-01-01 | 1d |  |  |  |  |  | 2 | 2 | 2 |
| 206 | 1.7.18.3 | 呼吸阀回装 | 1d | 2010-01-02 A | 2010-01-02 A | 205 | 100% |  | 2010-01-02 | 2010-01-02 | 1d |  |  |  |  |  | 2 | 2 | 2 |

Notes:
- 186: 1-8 已更换4个

| ID | WBS | Task | Type | Duration | Start | Finish | Predecessors | Complete | Baseline start | Baseline finish | Baseline duration | Constraint | Resources | Work | Actual work | Cost | Baseline cost | Actual cost |
| --- | --- | --- | --- | --- | --- | --- | --- | --- | --- | --- | --- | --- | --- | --- | --- | --- | --- | --- |
| 207 | 1.8 | **机泵类设备** |  | 26d | 2009-12-28 A | 2010-01-23 A |  | 100% | 2009-12-28 | 2010-01-19 | 23d |  |  | 4208h | 4208h | 174 | 202 | 174 |
| 208 | 1.8.1 | **一次机C1201大修** |  | 21d | 2009-12-28 A | 2010-01-17 A |  | 100% | 2009-12-28 | 2010-01-18 | 21.1d |  |  | 1865h | 1865h | 80 | 80 | 80 |
| 209 | 1.8.1.1 | 拆附属管线（含Hydracom系统） |  | 4h | 2009-12-28 A | 2009-12-28 A |  | 100% | 2009-12-28 | 2009-12-28 | 4h | start no earlier than 2009-12-28 | 钳工（动） [800%] | 32h | 32h | 2 | 2 | 2 |
| 210 | 1.8.1.2 | 拆各级进排气伐（44个伐） |  | 20h | 2009-12-28 A | 2009-12-30 A | 209 | 100% | 2009-12-28 | 2009-12-30 | 20h |  | 钳工（动） [800%]; 起重工（动） | 180h | 180h | 2 | 2 | 2 |
| 211 | 1.8.1.3 | 拆各级滑道、中体盖板 |  | 3h | 2009-12-30 A | 2009-12-30 A | 210 | 100% | 2009-12-30 | 2009-12-30 | 3h |  | 钳工（动） [400%] | 12h | 12h | 2 | 2 | 2 |
| 212 | 1.8.1.4 | 拆各级填料附属管线 |  | 3h | 2009-12-30 A | 2009-12-30 A | 210 | 100% | 2009-12-30 | 2009-12-30 | 3h |  | 钳工（动） [400%] | 12h | 12h | 2 | 2 | 2 |
| 213 | 1.8.1.5 | 测活塞杆运行跳动值 |  | 6h | 2009-12-30 A | 2009-12-31 A | 211, 212 | 100% | 2009-12-30 | 2009-12-31 | 6h |  | 钳工（动） [200%] | 12h | 12h | 2 | 2 | 2 |
| 214 | 1.8.1.6 | 测活塞死点 |  | 6h | 2009-12-30 A | 2009-12-31 A | 211, 212 | 100% | 2009-12-30 | 2009-12-31 | 6h |  | 钳工（动） | 6h | 6h | 2 | 2 | 2 |
| 215 | 1.8.1.7 | 测十字头与滑道间隙 |  | 3h | 2009-12-31 A | 2009-12-31 A | 213, 214 | 100% | 2009-12-31 | 2009-12-31 | 3h |  | 钳工（动） [200%] | 6h | 6h | 2 | 2 | 2 |
| 216 | 1.8.1.8 | 拆汽缸盖、曲轴箱盖 |  | 9h | 2009-12-30 A | 2009-12-31 A | 211, 212 | 100% | 2009-12-30 | 2009-12-31 | 9h |  | 钳工（动） [500%]; 起重工（动） | 54h | 54h | 2 | 2 | 2 |
| 217 | 1.8.1.9 | 断开十字头与活塞杆连接 |  | 12h | 2009-12-31 A | 2010-01-01 A | 215, 216 | 100% | 2009-12-31 | 2010-01-01 | 12h |  | 钳工（动） [200%] | 24h | 24h | 2 | 2 | 2 |
| 218 | 1.8.1.10 | 抽出活塞杆、活塞 |  | 12h | 2009-12-31 A | 2010-01-01 A | 215, 216 | 100% | 2009-12-31 | 2010-01-01 | 12h |  | 钳工（动） [600%]; 起重工（动） | 84h | 84h | 2 | 2 | 2 |
| 219 | 1.8.1.11 | 测大头瓦垂直间隙 |  | 22h | 2010-01-02 A | 2010-01-04 A | 217, 218 | 100% | 2010-01-01 | 2010-01-03 | 18h |  | 钳工（动） [200%]; 起重工（动） [50%] | 55h | 55h | 2 | 2 | 2 |
| 220 | 1.8.1.12 | 拆大头瓦，将连杆与十字头一起吊出 |  | 18h | 2010-01-01 A | 2010-01-03 A | 217, 218 | 100% | 2010-01-01 | 2010-01-03 | 18h |  |  |  |  | 2 | 2 | 2 |
| 221 | 1.8.1.13 | 拆填料、刮油环 |  | 12h | 2010-01-03 A | 2010-01-04 A |  | 100% | 2010-01-03 | 2010-01-04 | 12h |  | 钳工（动） [600%]; 起重工（动） | 84h | 84h | 2 | 2 | 2 |
| 222 | 1.8.1.14 | 检查活塞杆圆柱度磨损情况 |  | 4h | 2010-01-04 A | 2010-01-04 A | 219, 220 | 100% | 2010-01-03 | 2010-01-03 | 4h |  | 钳工（动） [200%] | 8h | 8h | 2 | 2 | 2 |
| 223 | 1.8.1.15 | 检查气缸缸套圆柱度，水平度，磨损情况 |  | 4h | 2010-01-04 A | 2010-01-04 A |  | 100% | 2010-01-04 | 2010-01-04 | 4h |  | 钳工（动） [200%] | 8h | 8h | 2 | 2 | 2 |
| 224 | 1.8.1.16 | 测曲轴张合度 |  | 4h | 2010-01-05 A | 2010-01-05 A |  | 100% | 2010-01-04 | 2010-01-04 | 4h |  | 钳工（动） [200%] | 8h | 8h | 2 | 2 | 2 |
| 225 | 1.8.1.17 | 拆曲轴箱支撑梁螺杆 |  | 4h | 2010-01-05 A | 2010-01-05 A | 221, 224 | 100% | 2010-01-04 | 2010-01-05 | 4h |  | 钳工（动） [600%] | 24h | 24h | 2 | 2 | 2 |
| 226 | 1.8.1.18 | 测主轴承间隙 |  | 4h | 2010-01-05 A | 2010-01-06 A | 221, 224 | 100% | 2010-01-04 | 2010-01-05 | 4h |  | 钳工（动） [200%] | 8h | 8h | 2 | 2 | 2 |
| 227 | 1.8.1.19 | 拆主轴承，检查瓦接触间隙 |  | 9h | 2010-01-06 A | 2010-01-07 A | 225, 226 | 100% | 2010-01-05 | 2010-01-06 | 9h |  | 钳工（动） [400%] | 36h | 36h | 2 | 2 | 2 |
| 228 | 1.8.1.20 | 回装主轴承 |  | 5h | 2010-01-07 A | 2010-01-07 A | 225, 226 | 100% | 2010-01-05 | 2010-01-06 | 9h | start no earlier than 2010-01-07 | 钳工（动） [400%]; 起重工（动） | 25h | 25h | 2 | 2 | 2 |
| 229 | 1.8.1.21 | 拆十字头销，测小头瓦间隙，磨损情况 |  | 5h | 2010-01-07 A | 2010-01-07 A | 227, 228 | 100% | 2010-01-06 | 2010-01-07 | 12h |  | 钳工（动） [400%] | 20h | 20h | 2 | 2 | 2 |
| 230 | 1.8.1.22 | 测大头瓦间隙，磨损情况 |  | 5h | 2010-01-07 A | 2010-01-08 A | 227, 228 | 100% | 2010-01-06 | 2010-01-07 | 12h |  | 钳工（动） [400%]; 起重工（动） | 25h | 25h | 2 | 2 | 2 |
| 231 | 1.8.1.23 | 连杆螺栓，活塞杆，十字头销着色检验 |  | 10h | 2010-01-08 A | 2010-01-09 A | 229, 230 | 100% | 2010-01-07 | 2010-01-08 | 10h | start no earlier than 2010-01-08 |  |  |  | 2 | 2 | 2 |
| 232 | 1.8.1.24 | 填料，刮油环组装 |  | 10h | 2010-01-09 A | 2010-01-09 A | 229, 230 | 100% | 2010-01-07 | 2010-01-08 | 10h | start no earlier than 2010-01-08 | 钳工（动） [500%] | 50h | 50h | 2 | 2 | 2 |
| 233 | 1.8.1.25 | 测活塞环间隙 |  | 10h | 2010-01-10 A | 2010-01-10 A | 229, 230 | 100% | 2010-01-07 | 2010-01-08 | 10h | start no earlier than 2010-01-10 | 钳工（动） [300%] | 30h | 30h | 2 | 2 | 2 |
| 234 | 1.8.1.26 | 测曲轴张合度 |  | 10h | 2010-01-11 A | 2010-01-11 A | 231, 232, 233 | 100% | 2010-01-08 | 2010-01-10 | 18h | start no earlier than 2010-01-08 | 钳工（动） | 10h | 10h | 2 | 2 | 2 |
| 235 | 1.8.1.27 | 组装十字头与连杆 |  | 10h | 2010-01-11 A | 2010-01-11 A | 231, 232, 233 | 100% | 2010-01-08 | 2010-01-10 | 18h |  | 钳工（动） [400%]; 起重工（动） [50%] | 45h | 45h | 2 | 2 | 2 |
| 236 | 1.8.1.28 | 填料装道机体 |  | 10h | 2010-01-11 A | 2010-01-11 A | 231, 232, 233 | 100% | 2010-01-08 | 2010-01-10 | 18h |  | 钳工（动） [300%]; 起重工（动） [50%] | 35h | 35h | 2 | 2 | 2 |
| 237 | 1.8.1.29 | 回装十字头，连杆，大头瓦至机体 |  | 30h | 2010-01-12 A | 2010-01-14 A | 234, 235, 236 | 100% | 2010-01-10 | 2010-01-11 | 12h |  | 钳工（动） [800%]; 起重工（动） | 270h | 270h | 2 | 2 | 2 |
| 238 | 1.8.1.30 | 装活塞杆，活塞 |  | 20h | 2010-01-15 A | 2010-01-16 A | 237 | 100% | 2010-01-11 | 2010-01-12 | 12h |  | 钳工（动） [500%]; 起重工（动） [50%] | 110h | 110h | 2 | 2 | 2 |
| 239 | 1.8.1.31 | 测十字头与滑道间隙 |  | 12h | 2010-01-15 A | 2010-01-16 A |  | 100% | 2010-01-11 | 2010-01-12 | 12h | start no earlier than 2010-01-15 | 钳工（动） [200%]; 起重工（动） [50%] | 30h | 30h | 2 | 2 | 2 |
| 240 | 1.8.1.32 | 测量活塞杆运行跳动值，并做调节 |  | 12h | 2010-01-16 A | 2010-01-17 A | 239 | 100% | 2010-01-12 | 2010-01-13 | 12h | start no earlier than 2010-01-15 | 钳工（动） [200%]; 起重工（动） [50%] | 30h | 30h | 2 | 2 | 2 |
| 241 | 1.8.1.33 | 回装气缸头盖，曲轴箱盖 |  | 20h | 2010-01-16 A | 2010-01-17 A |  | 100% | 2010-01-12 | 2010-01-13 | 12h | finish no earlier than 2010-01-19 | 钳工（动） [500%]; 起重工（动） [50%] | 110h | 110h | 2 | 2 | 2 |
| 242 | 1.8.1.34 | 装进出口伐 |  | 50h | 2010-01-13 A | 2010-01-17 A |  | 100% | 2010-01-13 | 2010-01-15 | 20h | start no earlier than 2010-01-13 | 钳工（动） [600%]; 起重工（动） | 350h | 350h | 2 | 2 | 2 |
| 243 | 1.8.1.35 | 测活塞死点 |  | 20h | 2010-01-14 A | 2010-01-15 A |  | 100% | 2010-01-13 | 2010-01-15 | 20h | start no earlier than 2010-01-14 | 钳工（动） [200%] | 40h | 40h | 2 | 2 | 2 |
| 244 | 1.8.1.36 | 回装附属管线 |  | 4h | 2010-01-17 A | 2010-01-17 A |  | 100% | 2010-01-15 | 2010-01-16 | 4h | start no earlier than 2010-01-17 | 钳工（动） [400%] | 16h | 16h | 2 | 2 | 2 |
| 245 | 1.8.1.37 | 回装侧盖板 |  | 4h | 2010-01-17 A | 2010-01-17 A |  | 100% | 2010-01-15 | 2010-01-16 | 4h | start no earlier than 2010-01-17 | 钳工（动） [400%] | 16h | 16h | 2 | 2 | 2 |
| 246 | 1.8.1.38 | 一次机交出 | milestone | 0d | 2010-01-17 A | 2010-01-17 A | 244, 245 | 100% | 2010-01-16 | 2010-01-16 | 0d |  |  |  |  | 2 | 2 | 2 |
| 247 | 1.8.1.39 | 油运 |  | 1d | 2010-01-16 A | 2010-01-16 A |  | 100% | 2010-01-16 | 2010-01-17 | 1d | start no earlier than 2010-01-16 |  |  |  | 2 | 2 | 2 |
| 248 | 1.8.1.40 | 试车 |  | 1d | 2010-01-17 A | 2010-01-17 A | 247 | 100% | 2010-01-17 | 2010-01-18 | 1d |  |  |  |  | 2 | 2 | 2 |

Notes:
- 210: 天车配合
- 216: 天车配合
- 218: 起重、天车配合
- 219: 天车配合
- 221: 天车配合
- 228: 天车配合
- 230: 天车配合
- 231: 外单位人员进行
- 235: 天车配合
- 236: 天车配合
- 238: 起重，天车配合
- 241: 天车配合
- 242: 天车配合

| ID | WBS | Task | Type | Duration | Start | Finish | Predecessors | Complete | Baseline start | Baseline finish | Baseline duration | Constraint | Resources | Work | Actual work | Cost | Baseline cost | Actual cost |
| --- | --- | --- | --- | --- | --- | --- | --- | --- | --- | --- | --- | --- | --- | --- | --- | --- | --- | --- |
| 249 | 1.8.2 | **二次机C1202大修** |  | 20d | 2009-12-29 A | 2010-01-17 A |  | 100% | 2009-12-29 | 2010-01-19 | 22d |  |  | 2240h | 2240h | 46 | 46 | 46 |
| 250 | 1.8.2.1 | 拆卸出入口管线 |  | 1d | 2009-12-29 A | 2009-12-29 A |  | 100% | 2009-12-29 | 2009-12-29 | 1d | start no earlier than 2009-12-29 | 钳工（动） [350%]; 起重工（动） [50%] | 40h | 40h | 2 | 2 | 2 |
| 251 | 1.8.2.2 | 拆12A/21A缸填料及中心阀 |  | 1d | 2009-12-30 A | 2009-12-30 A | 250 | 100% | 2009-12-30 | 2009-12-30 | 1d |  | 钳工（动） [350%]; 起重工（动） [50%] | 40h | 40h | 2 | 2 | 2 |
| 252 | 1.8.2.3 | 12A/21A缸填料及中心阀外送维修 | milestone | 0d | 2009-12-31 A | 2009-12-31 A | 251 | 100% | 2009-12-30 | 2009-12-30 | 0d | start no earlier than 2009-12-31 |  |  |  | 2 | 2 | 2 |
| 253 | 1.8.2.4 | 拆11A/22A缸填料及中心阀 |  | 1d | 2009-12-31 A | 2009-12-31 A | 252 | 100% | 2009-12-31 | 2009-12-31 | 1d |  | 钳工（动） [350%]; 起重工（动） [50%] | 40h | 40h | 2 | 2 | 2 |
| 254 | 1.8.2.5 | 拆卸曲轴箱盖 |  | 1d | 2009-12-31 A | 2009-12-31 A | 252 | 100% | 2009-12-31 | 2009-12-31 | 1d |  | 钳工（动） [350%]; 起重工（动） [50%] | 40h | 40h | 2 | 2 | 2 |
| 255 | 1.8.2.6 | 12A/221缸填料和中心阀外送维修 | milestone | 0d | 2010-01-01 A | 2010-01-01 A | 253, 254 | 100% | 2009-12-31 | 2009-12-31 | 0d | start no earlier than 2010-01-01 | 钳工（动） [700%] |  |  | 2 | 2 | 2 |
| 256 | 1.8.2.7 | 拆21B/22B/12B缸填料及中心阀 |  | 1d | 2010-01-01 A | 2010-01-01 A | 253, 254 | 100% | 2010-01-01 | 2010-01-01 | 1d |  |  |  |  | 2 | 2 | 2 |
| 257 | 1.8.2.8 | 21B/22B/12B缸填料及中心阀外送维修 | milestone | 0d | 2010-01-02 A | 2010-01-02 A | 256 | 100% | 2010-01-01 | 2010-01-01 | 0d | start no earlier than 2010-01-02 | 钳工（动） [350%]; 起重工（动） [50%] |  |  | 2 | 2 | 2 |
| 258 | 1.8.2.9 | 检查曲轴箱、相架滑道间隙、主轴承间隙 |  | 1d | 2010-01-04 A | 2010-01-04 A | 256 | 100% | 2010-01-02 | 2010-01-02 | 1d |  | 钳工（动） [350%]; 起重工（动） [50%] | 40h | 40h | 2 | 2 | 2 |
| 259 | 1.8.2.10 | 检查辅助十字头滑道及间隙、各段柱塞测量检查 |  | 0.5d | 2010-01-05 A | 2010-01-05 A | 258 | 100% | 2010-01-03 | 2010-01-03 | 1d |  |  |  |  | 2 | 2 | 2 |
| 260 | 1.8.2.11 | 根据曲轴箱检查情况抽一列框架滑板及大、小头瓦拆卸检查 |  | 1d | 2010-01-05 A | 2010-01-05 A | 259 | 100% | 2010-01-04 | 2010-01-08 | 5d |  | 钳工（动） [350%]; 起重工（动） [50%] | 40h | 40h | 2 | 2 | 2 |
| 261 | 1.8.2.12 | 清理曲轴箱 |  | 1d | 2010-01-06 A | 2010-01-06 A | 260 | 100% | 2010-01-09 | 2010-01-09 | 1d |  | 钳工（动） [350%]; 起重工（动） [50%] | 40h | 40h | 2 | 2 | 2 |
| 262 | 1.8.2.13 | 检查更换11A/12A/22A/22B缸的刮油杯 |  | 5d | 2010-01-07 A | 2010-01-11 A | 261 | 100% | 2010-01-10 | 2010-01-10 | 1d |  |  |  |  | 2 | 2 | 2 |
| 263 | 1.8.2.14 | 回装12A/21A缸填料及中心阀 |  | 6d | 2010-01-07 A | 2010-01-12 A |  | 100% | 2010-01-11 | 2010-01-11 | 1d | start no earlier than 2010-01-07 | 钳工（动） [700%]; 起重工（动） | 480h | 480h | 2 | 2 | 2 |
| 264 | 1.8.2.15 | 回装11A/22A缸填料及中心阀 |  | 4d | 2010-01-09 A | 2010-01-12 A |  | 100% | 2010-01-12 | 2010-01-12 | 1d | start no earlier than 2010-01-09 | 钳工（动） [700%]; 起重工（动） | 320h | 320h | 2 | 2 | 2 |
| 265 | 1.8.2.16 | 回装21B缸及填料、中心阀检查修理注油器 |  | 4d | 2010-01-09 A | 2010-01-12 A |  | 100% | 2010-01-13 | 2010-01-13 | 1d | start no earlier than 2010-01-09 | 钳工（动） [600%] | 240h | 240h | 2 | 2 | 2 |
| 266 | 1.8.2.17 | 检查电机轴瓦及盘车器 |  | 1d | 2010-01-16 A | 2010-01-16 A | 265 | 100% | 2010-01-14 | 2010-01-14 | 1d | start no earlier than 2010-01-16 | 钳工（动） [200%] | 20h | 20h | 2 | 2 | 2 |
| 267 | 1.8.2.18 | 外送维修填料及中心阀两套回来（1、2段各一套） | milestone | 0d | 2010-01-14 A | 2010-01-14 A |  | 100% | 2010-01-14 | 2010-01-14 | 0d | start no earlier than 2010-01-14 | 钳工（动） [200%] |  |  | 2 | 2 | 2 |
| 268 | 1.8.2.19 | 回装12B/22B缸填料及中心阀 |  | 4d | 2010-01-11 A | 2010-01-14 A |  | 100% | 2010-01-15 | 2010-01-15 | 1d | start no earlier than 2010-01-11 | 钳工（动） | 40h | 40h | 2 | 2 | 2 |
| 269 | 1.8.2.20 | 框架润滑油站及柱塞冷冲油站检修 |  | 2d | 2010-01-09 A | 2010-01-10 A |  | 100% | 2010-01-16 | 2010-01-16 | 1d | start no earlier than 2010-01-09 | 钳工（动） [400%] | 80h | 80h | 2 | 2 | 2 |
| 270 | 1.8.2.21 | 曲轴箱底板及各油管漏油处理 |  | 9d | 2010-01-09 A | 2010-01-17 A |  | 100% | 2010-01-17 | 2010-01-17 | 1d | start no earlier than 2010-01-09 | 钳工（动） [700%] | 630h | 630h | 2 | 2 | 2 |
| 271 | 1.8.2.22 | 加油、油运 |  | 1d | 2010-01-16 A | 2010-01-16 A |  | 100% | 2010-01-18 | 2010-01-18 | 1d | start no earlier than 2010-01-16 | 钳工（动） [700%] | 70h | 70h | 2 | 2 | 2 |
| 272 | 1.8.2.23 | 出入口管线复位 |  | 1d | 2010-01-17 A | 2010-01-17 A | 271 | 100% | 2010-01-19 | 2010-01-19 | 1d |  | 钳工（动） [700%]; 起重工（动） | 80h | 80h | 2 | 2 | 2 |

Notes:
- 255: 需天车配合 一段、二段各一个中心阀和填料盘，属于正常延误
- 257: 送上海维修
- 260: 该工序已取消

| ID | WBS | Task | Type | Duration | Start | Finish | Predecessors | Complete | Baseline start | Baseline finish | Baseline duration | Constraint | Resources | Work | Actual work | Cost | Baseline cost | Actual cost |
| --- | --- | --- | --- | --- | --- | --- | --- | --- | --- | --- | --- | --- | --- | --- | --- | --- | --- | --- |
| 273 | 1.8.3 | **催化剂泵检修** |  | 5d | 2009-12-30 A | 2010-01-03 A |  | 100% | 2009-12-30 | 2010-01-03 | 5d |  |  |  |  |  |  |  |
| 274 | 1.8.3.1 | P1001A油路检查及换油 |  | 1d | 2009-12-30 A | 2009-12-30 A |  | 100% | 2009-12-30 | 2009-12-30 | 1d | start no earlier than 2009-12-30 |  |  |  |  |  |  |
| 275 | 1.8.3.2 | P1001B油路检查及换油 |  | 1d | 2009-12-31 A | 2009-12-31 A | 274 | 100% | 2009-12-31 | 2009-12-31 | 1d |  |  |  |  |  |  |  |
| 276 | 1.8.3.3 | P1002A油路检查及换油 |  | 1d | 2010-01-01 A | 2010-01-01 A | 275 | 100% | 2010-01-01 | 2010-01-01 | 1d |  |  |  |  |  |  |  |
| 277 | 1.8.3.4 | P1002B油路检查及换油 |  | 1d | 2010-01-02 A | 2010-01-02 A | 276 | 100% | 2010-01-02 | 2010-01-02 | 1d |  |  |  |  |  |  |  |
| 278 | 1.8.3.5 | P1002C油路检查及换油 |  | 1d | 2010-01-03 A | 2010-01-03 A | 277 | 100% | 2010-01-03 | 2010-01-03 | 1d |  |  |  |  |  |  |  |
| 279 | 1.8.4 | 液压油系统检修 |  | 1d | 2010-01-04 A | 2010-01-04 A | 278 | 100% | 2010-01-04 | 2010-01-04 | 1d |  |  |  |  |  |  |  |
| 280 | 1.8.5 | **冰机系统检修** |  | 25d | 2009-12-29 A | 2010-01-23 A |  | 100% | 2009-12-29 | 2010-01-09 | 12d |  |  |  |  |  |  |  |
| 281 | 1.8.5.1 | X0310A1/B1系统除霜处理 |  | 4d | 2009-12-29 A | 2010-01-01 A |  | 100% | 2009-12-29 | 2010-01-01 | 4d | start no earlier than 2009-12-29 |  |  |  |  |  |  |
| 282 | 1.8.5.2 | X0310A2/B2系统除霜处理 |  | 2d | 2010-01-02 A | 2010-01-03 A |  | 100% | 2010-01-02 | 2010-01-03 | 2d | start no earlier than 2010-01-02 |  |  |  |  |  |  |
| 283 | 1.8.5.3 | X0320A/B冷冻水系统检修 | milestone | 0d | 2010-01-23 A | 2010-01-23 A |  | 100% | 2009-12-29 | 2010-01-09 | 12d | start no earlier than 2010-01-23 |  |  |  |  |  |  |
| 284 | 1.8.6 | **G-1701主挤压机检修** |  | 2d | 2009-12-28 A | 2009-12-29 A |  | 100% | 2009-12-28 | 2010-01-04 | 7.9d |  |  | 103h | 103h | 38 | 38 | 38 |
| 285 | 1.8.6.1 | 退出切粒机台车，检查拆卸刀盘 |  | 1h | 2009-12-28 A | 2009-12-28 A |  | 100% | 2009-12-28 | 2009-12-28 | 1h | start no earlier than 2009-12-28 | 钳工（动） [300%]; 起重工（动） | 4h | 4h | 2 | 2 | 2 |
| 286 | 1.8.6.2 | 检查刀轴与模板、切粒舱的垂直度，做好记录 |  | 1h | 2009-12-28 A | 2009-12-28 A | 285 | 100% | 2009-12-28 | 2009-12-28 | 1h |  | 钳工（动） [300%] | 3h | 3h | 2 | 2 | 2 |
| 287 | 1.8.6.3 | 拆除固定模头（模座）在挤压机筒体端法兰上的M66双头螺栓22条，远离挤压机 |  | 4h | 2009-12-28 A | 2009-12-28 A | 286 | 100% | 2009-12-28 | 2009-12-28 | 4h |  | 钳工（动） [600%] | 24h | 24h | 2 | 2 | 2 |
| 288 | 1.8.6.4 | 旋松六角圆头螺钉，拆除滤网扣环 |  | 1h | 2009-12-28 A | 2009-12-28 A | 287 | 100% | 2009-12-28 | 2009-12-28 | 1h |  | 钳工（动） [500%]; 起重工（动） | 6h | 6h | 2 | 2 | 2 |
| 289 | 1.8.6.5 | 拆除固定滤网的螺栓，拆除堵塞的滤网 |  | 2h | 2009-12-28 A | 2009-12-28 A | 288 | 100% | 2009-12-28 | 2009-12-28 | 2h |  | 钳工（动） [500%]; 起重工（动） | 12h | 12h | 2 | 2 | 2 |
| 290 | 1.8.6.6 | 拆除多孔板（筛网）清理 |  | 2h | 2009-12-28 A | 2009-12-29 A | 289 | 100% | 2009-12-28 | 2009-12-29 | 2h |  | 钳工（动） [500%]; 起重工（动） | 12h | 12h | 2 | 2 | 2 |
| 291 | 1.8.6.7 | 更换，回装多孔板及新滤网 |  | 2h | 2009-12-29 A | 2009-12-29 A | 290 | 100% | 2009-12-29 | 2009-12-29 | 2h |  | 钳工（动） [500%]; 起重工（动） | 12h | 12h | 2 | 2 | 2 |
| 292 | 1.8.6.8 | 回装固定模头（模座）在挤压机筒体端法兰上的22条M66双头螺栓 |  | 3h | 2009-12-29 A | 2009-12-29 A | 291 | 100% | 2009-12-29 | 2009-12-29 | 3h |  | 钳工（动） [600%] | 18h | 18h | 2 | 2 | 2 |
| 293 | 1.8.6.9 | 调整切粒刀轴与模板垂直度，及电机对中 |  | 4h | 2009-12-29 A | 2009-12-29 A | 292 | 100% | 2009-12-29 | 2009-12-29 | 4h |  | 钳工（动） [300%] | 12h | 12h | 2 | 2 | 2 |
| 294 | 1.8.6.10 | 更换切粒机切粒舱紧锁装置，进刀装置润滑加脂 | milestone | 0h | 2009-12-29 A | 2009-12-29 A | 293 | 100% | 2009-12-30 | 2009-12-30 | 5h |  | 钳工（动） [300%] |  |  | 2 | 2 | 2 |
| 295 | 1.8.6.11 | 切粒机移动泵检查，加脂 | milestone | 0h | 2009-12-29 A | 2009-12-29 A | 294 | 100% | 2009-12-30 | 2009-12-30 | 2h |  | 钳工（动） [300%] |  |  | 2 | 2 | 2 |
| 296 | 1.8.6.12 | 回装切刀 | milestone | 0h | 2009-12-29 A | 2009-12-29 A | 295 | 100% | 2009-12-30 | 2009-12-30 | 1h |  | 钳工（动） [300%] |  |  | 2 | 2 | 2 |
| 297 | 1.8.6.13 | 拆除齿轮箱附属管线 | milestone | 0h | 2009-12-29 A | 2009-12-29 A | 296 | 100% | 2009-12-30 | 2009-12-31 | 4h |  | 钳工（动） [300%] |  |  | 2 | 2 | 2 |
| 298 | 1.8.6.14 | 拆卸齿轮箱大盖螺栓及定位销，吊起大盖 | milestone | 0h | 2009-12-29 A | 2009-12-29 A | 297 | 100% | 2009-12-31 | 2010-01-01 | 10h |  | 钳工（动） [500%]; 起重工（动） |  |  | 2 | 2 | 2 |
| 299 | 1.8.6.15 | 检查齿轮箱，外专及生产车间确认，齿轮箱各配合间隙及完好情况 | milestone | 0h | 2009-12-29 A | 2009-12-29 A | 298 | 100% | 2010-01-01 | 2010-01-02 | 15h |  |  |  |  | 2 | 2 | 2 |
| 300 | 1.8.6.16 | 回装齿轮箱大盖及附属管线 | milestone | 0h | 2009-12-29 A | 2009-12-29 A | 299 | 100% | 2010-01-02 | 2010-01-03 | 10h |  | 钳工（动） [500%]; 起重工（动） |  |  | 2 | 2 | 2 |
| 301 | 1.8.6.17 | 更换齿轮箱润滑油 | milestone | 0h | 2009-12-29 A | 2009-12-29 A | 300 | 100% | 2010-01-03 | 2010-01-03 | 2h |  | 钳工（动） [300%] |  |  | 2 | 2 | 2 |
| 302 | 1.8.6.18 | 挤压机交出 | milestone | 0h | 2009-12-29 A | 2009-12-29 A | 301 | 100% | 2010-01-03 | 2010-01-03 | 0d |  |  |  |  | 2 | 2 | 2 |
| 303 | 1.8.6.19 | 试运 | milestone | 0h | 2009-12-29 A | 2009-12-29 A | 302 | 100% | 2010-01-03 | 2010-01-04 | 1d |  |  |  |  | 2 | 2 | 2 |

Notes:
- 283: X032A/B冷冻水系统检修任务取消，提供设备的厂家没有来
- 284: 挤压机未按统筹，实际为精简施工，拆下摸头及筛网之后便回装，挤压机部分施工完毕

| ID | WBS | Task | Duration | Start | Finish | Predecessors | Complete | Baseline start | Baseline finish | Baseline duration | Constraint | Cost | Baseline cost | Actual cost |
| --- | --- | --- | --- | --- | --- | --- | --- | --- | --- | --- | --- | --- | --- | --- |
| 304 | 1.8.7 | **振动筛检修** | 11d | 2009-12-31 A | 2010-01-10 A |  | 100% | 2009-12-31 | 2010-01-11 | 12d |  |  |  |  |
| 305 | 1.8.7.1 | 拆大盖清理 | 1d | 2009-12-31 A | 2009-12-31 A |  | 100% | 2009-12-31 | 2009-12-31 | 1d | start no earlier than 2009-12-31 |  |  |  |
| 306 | 1.8.7.2 | 测绘加工上层筛网骨架 | 10d | 2010-01-01 A | 2010-01-10 A | 305 | 100% | 2010-01-01 | 2010-01-10 | 10d |  |  |  |  |
| 307 | 1.8.8 | **离心干燥器检修** | 22d | 2009-12-28 A | 2010-01-18 A |  | 100% | 2009-12-28 | 2010-01-19 | 23d |  | 10 | 10 | 10 |
| 308 | 1.8.8.1 | 拆大、小皮带轮 | 1d | 2009-12-28 A | 2009-12-28 A |  | 100% | 2009-12-28 | 2009-12-28 | 1d | start no earlier than 2009-12-28 | 2 | 2 | 2 |
| 309 | 1.8.8.2 | 皮带轮测绘加工 | 12d | 2009-12-29 A | 2010-01-09 A | 308 | 100% | 2009-12-29 | 2010-01-07 | 10d |  | 2 | 2 | 2 |
| 310 | 1.8.8.3 | 新皮带轮安装 | 2d | 2010-01-10 A | 2010-01-11 A | 309 | 100% | 2010-01-08 | 2010-01-09 | 2d | start no earlier than 2010-01-07 | 2 | 2 | 2 |
| 311 | 1.8.8.4 | 离心干燥器试运检验皮带轮 | 7d | 2010-01-12 A | 2010-01-18 A | 310 | 100% | 2010-01-10 | 2010-01-19 | 10d |  | 2 | 2 | 2 |
| 312 | 1.8.8.5 | 更换皮带、入口滤网 | 1d | 2010-01-03 A | 2010-01-03 A |  | 100% | 2010-01-03 | 2010-01-03 | 1d | start no earlier than 2010-01-03 | 2 | 2 | 2 |
| 313 | 1.8.9 | 回装 | 1d | 2010-01-18 A | 2010-01-18 A |  | 100% | 2010-01-11 | 2010-01-11 | 1d | start no earlier than 2010-01-18 |  |  |  |
| 314 | 1.8.10 | **脱气风机C5101A/B/C检修** | 3d | 2010-01-01 A | 2010-01-03 A |  | 100% | 2010-01-01 | 2010-01-03 | 3d |  |  |  |  |
| 315 | 1.8.10.1 | 检查更换皮带、更换入口滤网 | 3d | 2010-01-01 A | 2010-01-03 A |  | 100% | 2010-01-01 | 2010-01-03 | 3d | start no earlier than 2010-01-01 |  |  |  |
| 316 | 1.8.11 | **输送风机检修** | 7.5d | 2010-01-08 A | 2010-01-15 A |  | 100% | 2010-01-04 | 2010-01-09 | 6d |  |  |  |  |
| 317 | 1.8.11.1 | C5102A/B更换油滤网、油过滤器、入口过滤网、清理隔音罩 | 2d | 2010-01-08 A | 2010-01-09 A |  | 100% | 2010-01-04 | 2010-01-05 | 2d | start no earlier than 2010-01-08 |  |  |  |
| 318 | 1.8.11.2 | C5103A/B更换油滤网、油过滤器、入口过滤网、清理隔音罩 | 3.5d | 2010-01-10 A | 2010-01-13 A | 317 | 100% | 2010-01-06 | 2010-01-07 | 2d |  |  |  |  |
| 319 | 1.8.11.3 | C5104A/B更换油滤网、油过滤器、入口过滤网、清理隔音罩 | 2d | 2010-01-13 A | 2010-01-15 A | 318 | 100% | 2010-01-08 | 2010-01-09 | 2d |  |  |  |  |
| 320 | 1.9 | **仪表、电气设备** | 22d | 2009-12-29 A | 2010-01-19 A |  | 100% | 2009-12-29 | 2010-01-19 | 22d |  |  |  |  |
| 321 | 1.9.1 | **超高压热电偶拆装** | 12d | 2010-01-03 A | 2010-01-14 A |  | 100% | 2010-01-03 | 2010-01-14 | 12d |  |  |  |  |
| 322 | 1.9.1.1 | 拆 | 3.65d | 2010-01-03 A | 2010-01-14 A |  | 100% | 2010-01-03 | 2010-01-04 | 2d | start no earlier than 2010-01-03 |  |  |  |
| 323 | 1.9.1.2 | 校验 | 7d | 2010-01-05 A | 2010-01-11 A | 322 | 100% | 2010-01-05 | 2010-01-11 | 7d |  |  |  |  |
| 324 | 1.9.1.3 | 装 | 3d | 2010-01-12 A | 2010-01-14 A | 323 | 100% | 2010-01-12 | 2010-01-14 | 3d |  |  |  |  |
| 325 | 1.9.2 | **调节阀上下线** | 17d | 2010-01-01 A | 2010-01-17 A |  | 100% | 2010-01-01 | 2010-01-17 | 17d |  |  |  |  |
| 326 | 1.9.2.1 | 拆 | 4d | 2010-01-01 A | 2010-01-04 A |  | 100% | 2010-01-01 | 2010-01-04 | 4d | start no earlier than 2010-01-01 |  |  |  |
| 327 | 1.9.2.2 | 校验 | 8d | 2010-01-05 A | 2010-01-12 A | 326 | 100% | 2010-01-05 | 2010-01-12 | 8d |  |  |  |  |
| 328 | 1.9.2.3 | 装 | 5d | 2010-01-13 A | 2010-01-17 A | 327 | 100% | 2010-01-13 | 2010-01-17 | 5d |  |  |  |  |

Notes:
- 307: 后三项任务：即离心干燥器时运检验皮带轮；更换皮带、入滤口网；回装取消 / 原因：皮带尺寸不合适 / 至1月17日止离心干燥器检修已完成，属于精简施工。
- 320: 电气：1、现场操作柱检查 2、电机回装 3、 2#高压临时电源插座安装 4、LCI调试 5、励磁柜调试 / 仪表：主要控制点：仪表联校（联锁调校、分析仪表调校、核仪表调校）

| ID | WBS | Task | Type | Duration | Start | Finish | Predecessors | Complete | Remaining | Baseline start | Baseline finish | Baseline duration | Total slack | Free slack | Constraint | Resources | Work | Actual work | Cost | Baseline cost |
| --- | --- | --- | --- | --- | --- | --- | --- | --- | --- | --- | --- | --- | --- | --- | --- | --- | --- | --- | --- | --- |
| 329 | 1.9.3 | **流量计拆装** |  | 22d | 2009-12-29 A | 2010-01-19 A |  | 100% |  | 2009-12-29 | 2010-01-19 | 22d |  |  |  |  |  |  |  |  |
| 330 | 1.9.3.1 | 拆 |  | 4d | 2009-12-29 A | 2010-01-01 A |  | 100% |  | 2009-12-29 | 2010-01-01 | 4d |  |  | start no earlier than 2009-12-29 |  |  |  |  |  |
| 331 | 1.9.3.2 | 校验 |  | 14d | 2010-01-02 A | 2010-01-15 A | 330 | 100% |  | 2010-01-02 | 2010-01-15 | 14d |  |  |  |  |  |  |  |  |
| 332 | 1.9.3.3 | 装 |  | 4d | 2010-01-16 A | 2010-01-19 A | 331 | 100% |  | 2010-01-16 | 2010-01-19 | 4d |  |  |  |  |  |  |  |  |
| 333 | 1.10 | **其他项目** |  | 28d | 2009-12-28 A | 2010-01-24 |  | 94% | 1.64d | 2009-12-28 | 2010-01-22 | 26d | 4d |  |  |  | 240h | 240h |  |  |
| 334 | 1.10.1 | **蓄能器检查** |  | 8d | 2010-01-05 A | 2010-01-12 A |  | 100% |  | 2010-01-02 | 2010-01-13 | 12d |  |  |  |  |  |  |  |  |
| 335 | 1.10.1.1 | 高循区 |  | 5d | 2010-01-05 A | 2010-01-09 A |  | 100% |  | 2010-01-02 | 2010-01-06 | 5d |  |  | start no earlier than 2010-01-05 |  |  |  |  |  |
| 336 | 1.10.1.2 | 压缩区 |  | 0.2d | 2010-01-12 A | 2010-01-12 A | 335 | 100% |  | 2010-01-07 | 2010-01-08 | 2d |  |  | start no earlier than 2010-01-12 |  |  |  |  |  |
| 337 | 1.10.1.3 | 反应区 |  | 0.2d | 2010-01-12 A | 2010-01-12 A | 336 | 100% |  | 2010-01-09 | 2010-01-11 | 3d |  |  |  |  |  |  |  |  |
| 338 | 1.10.1.4 | 挤压区 |  | 0.6d | 2010-01-12 A | 2010-01-12 A | 337 | 100% |  | 2010-01-12 | 2010-01-13 | 2d |  |  |  |  |  |  |  |  |
| 339 | 1.10.2 | 地坪修复 | milestone | 0d | 2010-01-14 A | 2010-01-14 A |  | 100% |  | 2010-01-14 | 2010-01-22 | 9d |  |  | start no earlier than 2010-01-14 |  |  |  |  |  |
| 340 | 1.10.3 | 压缩遮阳棚拆除 |  | 6d | 2009-12-28 A | 2010-01-02 A |  | 100% |  | 2009-12-28 | 2010-01-02 | 6d |  |  | start no earlier than 2009-12-28 | 管铆（静）; 起重工（静）; 焊工（静） [200%] | 240h | 240h |  |  |
| 341 | 1.10.4 | 设备防腐 |  | 11d | 2010-01-14 A | 2010-01-24 |  | 88% | 1.35d | 2010-01-14 | 2010-01-22 | 9d | 4d | 0d | start no earlier than 2010-01-14 |  |  |  |  |  |
| 342 | 1.10.5 | 设备喷标识 | milestone | 0d | 2010-01-14 A | 2010-01-14 A |  | 100% |  | 2010-01-14 | 2010-01-22 | 9d |  |  | start no earlier than 2010-01-14 |  |  |  |  |  |
| 343 | 1.11 | 装置开车 |  | 1d | 2010-01-29 | 2010-01-29 | 53, 71, 145, 207, 333 |  |  | 2010-01-25 | 2010-01-26 | 2d | 0d |  | start no earlier than 2010-01-29 |  |  |  | 2 | 2 |

Notes:
- 339: 工作取消（时间不够）
- 342: 取消，很少设备需要喷标识
- 343: 高压预计在29日开车
